# Sample MS Project

Schedule from MS Project, 2022-03-01 to 2022-11-18, costs in $.

## Calendars

- Standard: Mon-Fri 08:00-12:00, 13:00-17:00; Sat-Sun off. Exceptions (off unless hours are given): 2022-04-15 (Good Friday), 2022-05-01 08:00-12:00, 13:00-17:00, 2022-05-23 (Victoria Day).

## Resources

| Resource | Group | Rate |
| --- | --- | --- |
| Project Manager | Project Manager | 50 |
| Marketing Analyst | Marketing Analyst | 35 |
| Business Analyst | Business Analyst | 35 |
| Project Coordinator | Project Coordinator | 35 |
| Research Analyst | Research Coordinator | 35 |
| CHCA Director | Dean | 45 |
| Charity Director | Charity Engagement and Growth | 55 |
| Lean Path Director | Supply Chain Director | 55 |
| GBC President | GBC President |  |
| GBC Students | GBC Student |  |
| Cafeteria Staff |  | 25 |
| Lean Path Staff |  | 30 |
| Delivery Staff |  | 20 |
| License Cost |  |  |
| Lean Path Equipments Cost |  |  |
| Operations Cost |  |  |

## Schedule

| ID | WBS | Task | Duration | Start | Finish | Predecessors | Baseline start | Baseline finish | Baseline duration | Total slack | Free slack | Constraint | Resources | Work | Cost | Baseline cost |
| --- | --- | --- | --- | --- | --- | --- | --- | --- | --- | --- | --- | --- | --- | --- | --- | --- |
| 1 | 1 | **1 Initiation** | 8d | 2022-03-01 | 2022-03-10 |  | 2022-03-01 | 2022-03-10 | 8d | 33d |  |  |  | 152h | 5,720 | 5,720 |
| 2 | 1.1 | **1.1 Perform Market Study** | 5d | 2022-03-01 | 2022-03-07 |  | 2022-03-01 | 2022-03-07 | 5d | 33d |  |  |  | 72h | 2,760 | 2,760 |
| 3 | 1.1.1 | 1.1.1 Study similar projects | 2d | 2022-03-01 | 2022-03-02 |  | 2022-03-01 | 2022-03-02 | 2d | 33d | 0d | start no earlier than 2022-03-01 | Project Manager; Research Analyst; Marketing Analyst | 48h | 1,920 | 1,920 |
| 4 | 1.1.2 | 1.1.2 Prepare market study report | 3d | 2022-03-03 | 2022-03-07 | 3 | 2022-03-03 | 2022-03-07 | 3d | 33d | 0d |  | Marketing Analyst | 24h | 840 | 840 |
| 5 | 1.2 | **1.1.3 Define project deliverables** | 3d | 2022-03-08 | 2022-03-10 |  | 2022-03-08 | 2022-03-10 | 3d | 33d |  |  |  | 80h | 2,960 | 2,960 |
| 6 | 1.2.1 | 1.2 Project Kick Off | 1d | 2022-03-08 | 2022-03-08 | 4 | 2022-03-08 | 2022-03-08 | 1d | 33d | 0d |  | CHCA Director; GBC President; Marketing Analyst; Project Coordinator; Project Manager; Research Analyst | 48h | 1,600 | 1,600 |
| 7 | 1.2.2 | 1.2.1 Generate project charter | 2d | 2022-03-09 | 2022-03-10 | 6 | 2022-03-09 | 2022-03-10 | 2d | 33d | 0d |  | Project Coordinator; Project Manager | 32h | 1,360 | 1,360 |
| 8 | 2 | **2 Planning** | 21d | 2022-03-11 | 2022-04-08 |  | 2022-03-11 | 2022-04-08 | 21d | 33d |  |  |  | 416h | 15,800 | 15,800 |
| 9 | 2.1 | **2.1 Consult Lean Path Spark Technology** | 9d | 2022-03-11 | 2022-03-23 |  | 2022-03-11 | 2022-03-23 | 9d | 33d |  |  |  | 208h | 7,360 | 7,360 |
| 10 | 2.1.1 | 2.1.1 Research past projects | 5d | 2022-03-11 | 2022-03-17 | 7 | 2022-03-11 | 2022-03-17 | 5d | 33d | 0d | start no earlier than 2022-03-11 | Business Analyst; Research Analyst | 80h | 2,800 | 2,800 |
| 11 | 2.1.2 | 2.1.2 Decide on strategy | 2d | 2022-03-18 | 2022-03-21 | 10 | 2022-03-18 | 2022-03-21 | 2d | 33d | 0d |  | Business Analyst; Project Coordinator; Project Manager; Research Analyst | 64h | 2,480 | 2,480 |
| 12 | 2.1.3 | 2.1.3 Finalize budget | 2d | 2022-03-22 | 2022-03-23 | 11 | 2022-03-22 | 2022-03-23 | 2d | 33d | 0d | start no earlier than 2022-03-22 | CHCA Director; GBC President; Project Coordinator; Project Manager | 64h | 2,080 | 2,080 |
| 13 | 2.2 | **2.2 Consult George Brown Cafeteria Director** | 12d | 2022-03-24 | 2022-04-08 |  | 2022-03-24 | 2022-04-08 | 12d | 33d |  |  |  | 208h | 8,440 | 8,440 |
| 14 | 2.2.1 | 2.2.1 Discuss Lean Path Spark strategy | 2d | 2022-03-24 | 2022-03-25 | 12 | 2022-03-24 | 2022-03-25 | 2d | 33d | 0d | start no earlier than 2022-03-24 | Business Analyst; Project Manager; Lean Path Director | 48h | 2,240 | 2,240 |
| 15 | 2.2.2 | 2.2.2 Collect requirements for cafeterias upgrade | 5d | 2022-03-28 | 2022-04-01 | 14 | 2022-03-28 | 2022-04-01 | 5d | 33d | 0d |  | Business Analyst | 40h | 1,400 | 1,400 |
| 16 | 2.2.3 | 2.2.3 Finalize plan for cafeterias upgrade | 5d | 2022-04-04 | 2022-04-08 | 15 | 2022-04-04 | 2022-04-08 | 5d | 33d | 15d | start no earlier than 2022-04-01 | Business Analyst; Project Coordinator; Project Manager | 120h | 4,800 | 4,800 |
| 17 | 3 | **3 Execution** | 44d | 2022-05-02 | 2022-07-01 |  | 2022-05-02 | 2022-07-01 | 44d | 18d |  |  |  | 638.33h | 19,976.67 | 19,416.67 |
| 18 | 3.1 | **3.1 Install Lean Path Spark Software** | 12d | 2022-05-02 | 2022-05-17 |  | 2022-05-02 | 2022-05-17 | 12d | 18d |  |  |  | 120h | 4,560 | 4,440 |
| 19 | 3.1.1 | 3.1.1 Contact Lean Path | 4d | 2022-05-02 | 2022-05-05 | 16 | 2022-05-02 | 2022-05-05 | 4d | 18d | 0d | start no earlier than 2022-05-02 | Lean Path Director [50%]; Project Coordinator [50%] | 32h | 1,440 | 1,440 |
| 20 | 3.1.2 | 3.1.2 Acquire license | 5d | 2022-05-06 | 2022-05-12 | 19 | 2022-05-06 | 2022-05-12 | 5d | 18d | 0d |  | Lean Path Director [50%]; Project Coordinator [50%] | 40h | 1,800 | 1,800 |
| 21 | 3.1.3 | 3.1.3 Perform pilot run | 3d | 2022-05-13 | 2022-05-17 | 20 | 2022-05-13 | 2022-05-17 | 3d | 18d | 9d |  | Cafeteria Staff; Lean Path Staff | 48h | 1,320 | 1,200 |
| 22 | 3.2 | **3.2 Utilise leftover food** | 14d | 2022-05-02 | 2022-05-19 |  | 2022-05-02 | 2022-05-19 | 14d | 130d |  |  |  | 136h | 5,520 | 5,520 |
| 23 | 3.2.1 | 3.2.1 Contact homeless shelters/orpahanges/food banks | 5d | 2022-05-02 | 2022-05-06 | 16 | 2022-05-02 | 2022-05-06 | 5d | 130d | 0d | start no earlier than 2022-05-02 | Charity Director [30%]; Project Coordinator [30%]; Project Manager [40%] | 40h | 1,880 | 1,880 |
| 24 | 3.2.2 | 3.2.2 Sign contract with homeless shelters/orpahanges/food banks | 5d | 2022-05-09 | 2022-05-13 | 23 | 2022-05-09 | 2022-05-13 | 5d | 130d | 0d |  | Charity Director [20%]; Project Manager [80%] | 32h | 1,640 | 1,640 |
| 25 | 3.2.3 | 3.2.3 Schedule deliveries | 4d | 2022-05-16 | 2022-05-19 | 24 | 2022-05-16 | 2022-05-19 | 4d | 130d |  | start no earlier than 2022-05-11 | Project Coordinator [50%]; Project Manager [50%]; Delivery Staff | 64h | 2,000 | 2,000 |

| ID | WBS | Task | Duration | Start | Finish | Predecessors | Baseline start | Baseline finish | Baseline duration | Total slack | Free slack | Constraint | Resources | Work | Cost | Baseline cost |
| --- | --- | --- | --- | --- | --- | --- | --- | --- | --- | --- | --- | --- | --- | --- | --- | --- |
| 26 | 3.3 | **3.3 Order small plates/storage containers for cafeterias** | 10d | 2022-05-17 | 2022-05-31 |  | 2022-05-17 | 2022-05-31 | 10d | 123d |  |  |  | 70.33h | 2,496.67 | 2,496.67 |
| 27 | 3.3.1 | 3.3.1 Research small plates and storage containers | 3d | 2022-05-17 | 2022-05-19 | 16 | 2022-05-17 | 2022-05-19 | 3d | 123d | 0d | start no earlier than 2022-05-17 | Research Analyst | 24h | 840 | 840 |
| 28 | 3.3.2 | 3.3.2 Compare suppliers per budget | 4d | 2022-05-20 | 2022-05-26 | 27 | 2022-05-20 | 2022-05-26 | 4d | 123d | 0d |  | Research Analyst | 32h | 1,120 | 1,120 |
| 29 | 3.3.3 | 3.3.3 Finalize supplier | 3d | 2022-05-27 | 2022-05-31 | 28 | 2022-05-27 | 2022-05-31 | 3d | 123d |  |  | Project Manager [50%]; Research Analyst [50%] | 14.33h | 536.67 | 536.67 |
| 30 | 3.4 | **3.4 Train Staff on using Lean Path Spark** | 14d | 2022-06-01 | 2022-06-20 |  | 2022-06-01 | 2022-06-20 | 14d | 9d |  |  |  | 184h | 5,680 | 5,240 |
| 31 | 3.4.1 | 3.4.1 Acquire training course | 5d | 2022-06-01 | 2022-06-07 | 21 | 2022-06-01 | 2022-06-07 | 5d | 9d | 0d | start no earlier than 2022-06-01 | Lean Path Director [20%]; Lean Path Staff [40%]; Project Manager [40%] | 40h | 1,720 | 1,640 |
| 32 | 3.4.2 | 3.4.2 Arrange training | 7d | 2022-06-08 | 2022-06-16 | 31 | 2022-06-08 | 2022-06-16 | 7d | 9d | 0d | start no earlier than 2022-06-08 | Cafeteria Staff; Lean Path Staff | 112h | 3,080 | 2,800 |
| 33 | 3.4.3 | 3.4.3 Handover training completion certificate | 2d | 2022-06-17 | 2022-06-20 | 32 | 2022-06-17 | 2022-06-20 | 2d | 9d | 0d |  | Cafeteria Staff; Lean Path Staff | 32h | 880 | 800 |
| 34 | 3.5 | **3.5 Educate students and staff on Food Wastage** | 9d | 2022-06-21 | 2022-07-01 |  | 2022-06-21 | 2022-07-01 | 9d | 100d |  |  |  | 128h | 1,720 | 1,720 |
| 35 | 3.5.1 | 3.5.1 Provide educational pamphlet | 4d | 2022-06-21 | 2022-06-24 | 33 | 2022-06-21 | 2022-06-24 | 4d | 100d | 0d | start no earlier than 2022-06-21 | GBC Students; Project Coordinator | 64h | 1,120 | 1,120 |
| 36 | 3.5.2 | 3.5.2 Hang educational posters in college | 2d | 2022-06-27 | 2022-06-28 | 35 | 2022-06-27 | 2022-06-28 | 2d | 100d | 0d |  | GBC Students | 16h |  |  |
| 37 | 3.5.3 | 3.5.3 Show impact of food wastage on the community/environment | 3d | 2022-06-29 | 2022-07-01 | 36 | 2022-06-29 | 2022-07-01 | 3d | 100d |  |  | Cafeteria Staff; GBC Students | 48h | 600 | 600 |
| 38 | 4 | **4 Monitoring** | 65d | 2022-07-04 | 2022-09-30 |  | 2022-07-04 | 2022-09-30 | 65d | 0d |  |  |  | 1000h | 36,000 | 34,400 |
| 39 | 4.1 | **4.1 Asses Performance** | 40d | 2022-07-04 | 2022-08-26 |  | 2022-07-04 | 2022-08-26 | 40d | 0d |  |  |  | 800h | 27,200 | 25,600 |
| 40 | 4.1.1 | 4.1.1 Monitor performance issues of Lean Path Spark software | 20d | 2022-07-04 | 2022-07-29 | 33 | 2022-07-04 | 2022-07-29 | 20d | 0d |  | start no earlier than 2022-07-04 | Cafeteria Staff; Lean Path Staff | 320h | 8,800 | 8,000 |
| 41 | 4.1.2 | 4.1.2 Analyze old vs new food wastage report | 10d | 2022-08-01 | 2022-08-12 | 40 | 2022-08-01 | 2022-08-12 | 10d | 0d |  |  | Business Analyst; Lean Path Staff; Project Manager | 240h | 9,200 | 8,800 |
| 42 | 4.1.3 | 4.1.3 Take corrective actions | 10d | 2022-08-15 | 2022-08-26 | 41 | 2022-08-15 | 2022-08-26 | 10d | 0d |  |  | Business Analyst; Lean Path Staff; Project Manager | 240h | 9,200 | 8,800 |
| 43 | 4.2 | **4.2 Validate quality, cost and scope of project** | 25d | 2022-08-29 | 2022-09-30 |  | 2022-08-29 | 2022-09-30 | 25d | 0d |  |  |  | 200h | 8,800 | 8,800 |
| 44 | 4.2.1 | 4.2.1 Schedule weekly status meetings | 15d | 2022-08-29 | 2022-09-16 | 42 | 2022-08-29 | 2022-09-16 | 15d | 0d |  | start no earlier than 2022-08-29 | Project Manager | 120h | 6,000 | 6,000 |
| 45 | 4.2.2 | 4.2.2 Compare project baselines | 5d | 2022-09-19 | 2022-09-23 | 44 | 2022-09-19 | 2022-09-23 | 5d | 0d |  |  | Project Coordinator | 40h | 1,400 | 1,400 |
| 46 | 4.2.3 | 4.2.3 Log issues affecting quality, cost and scope | 5d | 2022-09-26 | 2022-09-30 | 45 | 2022-09-26 | 2022-09-30 | 5d | 0d |  |  | Project Coordinator | 40h | 1,400 | 1,400 |
| 47 | 5 | **5 Closing** | 35d | 2022-10-03 | 2022-11-18 |  | 2022-10-03 | 2022-11-18 | 35d | 0d |  |  |  | 440h | 16,600 | 16,200 |
| 48 | 5.1 | **5.1 Finalize project completion** | 15d | 2022-10-03 | 2022-10-21 |  | 2022-10-03 | 2022-10-21 | 15d | 0d |  |  |  | 120h | 4,800 | 4,800 |
| 49 | 5.1.1 | 5.1.1 Update the project documentation | 5d | 2022-10-03 | 2022-10-07 | 46 | 2022-10-03 | 2022-10-07 | 5d | 0d |  | start no earlier than 2022-10-03 | Project Coordinator | 40h | 1,400 | 1,400 |
| 50 | 5.1.2 | 5.1.2 Conduct project satisfaction survey | 5d | 2022-10-10 | 2022-10-14 | 49 | 2022-10-10 | 2022-10-14 | 5d | 0d |  |  | Project Manager | 40h | 2,000 | 2,000 |
| 51 | 5.1.3 | 5.1.3 Create a final project report | 5d | 2022-10-17 | 2022-10-21 | 50 | 2022-10-17 | 2022-10-21 | 5d | 0d |  |  | Project Coordinator | 40h | 1,400 | 1,400 |

| ID | WBS | Task | Duration | Start | Finish | Predecessors | Baseline start | Baseline finish | Baseline duration | Total slack | Constraint | Resources | Work | Cost | Baseline cost |
| --- | --- | --- | --- | --- | --- | --- | --- | --- | --- | --- | --- | --- | --- | --- | --- |
| 52 | 5.2 | **5.2 Perfom project closure activities** | 20d | 2022-10-24 | 2022-11-18 |  | 2022-10-24 | 2022-11-18 | 20d | 0d |  |  | 320h | 11,800 | 11,400 |
| 53 | 5.2.1 | 5.2.1 Document lessons learnt | 5d | 2022-10-24 | 2022-10-28 | 51 | 2022-10-24 | 2022-10-28 | 5d | 0d | start no earlier than 2022-10-24 | Project Coordinator | 40h | 1,400 | 1,400 |
| 54 | 5.2.2 | 5.2.2 Verify completion of deliverables | 5d | 2022-10-31 | 2022-11-04 | 53 | 2022-10-31 | 2022-11-04 | 5d | 0d |  | Project Manager | 40h | 2,000 | 2,000 |
| 55 | 5.2.3 | 5.2.3 Handover operations to the cafeteria team | 10d | 2022-11-07 | 2022-11-18 | 54 | 2022-11-07 | 2022-11-18 | 10d | 0d |  | Cafeteria Staff; Lean Path Staff; Project Manager | 240h | 8,400 | 8,000 |
